# 11008506 from rtc a

Schedule from MS Project, 2020-04-09 to 2020-08-26.
General Dynamics Mission Systems

## Calendars

- Standard: Mon-Fri 08:00-12:00, 13:00-17:00; Sat-Sun off.

## Resources

| Resource |
| --- |
| Art |
| Dustin |
| Greg M |
| Jacob W |
| Joel |
| Katie |
| Ken |
| Khai |
| Max |
| Paul B |
| Ricardo |
| TBD |
| TBD2 |
| TBD3 |
| TBD4 |
| TBD5 |

## Schedule

| ID | WBS | Task | Type | Duration | Start | Finish | Predecessors | Total slack | Free slack | Resources | Work | Text1 | Text2_Pred |
| --- | --- | --- | --- | --- | --- | --- | --- | --- | --- | --- | --- | --- | --- |
| 1 | 1 | **EA 15.1** |  | 9d | 2020-04-09 | 2020-04-22 |  | 0d |  |  | 80h |  |  |
| 2 | 1.1 | Start EA 15.1 | milestone, manual | 0d | 2020-04-09 | 2020-04-09 |  |  |  |  |  |  |  |
| 3 | 1.2 | 1019150: Create template for Splunk Troubleshooting procedures |  | 1d | 2020-04-14 | 2020-04-14 | 8 | 95d |  | Katie | 8h | EA 15.1 |  |
| 4 | 1.3 | 1015751: Resolve Problem 332002: "IETM Procedure update from DTA-4 Finding: Action to Restore Service for PRV |  | 1d | 2020-04-09 | 2020-04-09 | 2 | 98d |  | Max | 8h | EA 15.1 |  |
| 5 | 1.4 | 1017340: UX Support for HA Splunk - Recovery Procedures only (Part 1 of 3) |  | 1d | 2020-04-09 | 2020-04-09 | 2 | 98d |  | Jacob W | 8h | EA 15.1 |  |
| 6 | 1.5 | 1017478: Write Troubleshooting procedure 16 - Troubleshooting when search head member cannot send to captain |  | 2d | 2020-04-09 | 2020-04-10 | 2 | 95d | 0d | Joel | 16h | EA 15.1 |  |
| 7 | 1.6 | 1014345: Write Troubleshooting procedure 8 - Recover from Search Head Cluster <-> Search Head Cluster Deploy |  | 2d | 2020-04-13 | 2020-04-14 | 6 | 95d |  | Joel | 16h | EA 15.1 |  |
| 8 | 1.7 | 1017449: Write recovery Procedure 6- Decoder recovery procedure for lost heartbeat alarm |  | 3d | 2020-04-09 | 2020-04-13 | 2 | 95d | 0d | Katie | 24h | EA 15.1 |  |
| 9 | 1.8 | End EA 15.1 | milestone, manual | 0d | 2020-04-22 | 2020-04-22 |  |  |  |  |  |  |  |
| 10 | 2 | **EA 15.2** |  | 9d | 2020-04-23 | 2020-05-06 |  | 0d |  |  | 152h |  |  |
| 11 | 2.1 | Start EA 15.2 | milestone, manual | 0d | 2020-04-23 | 2020-04-23 |  |  |  |  |  |  |  |
| 12 | 2.2 | 1017450: Create and support review of Splunk HA recovery procedures |  | 2d | 2020-04-23 | 2020-04-24 | 11 | 83d | 0d | Joel | 16h | EA 15.2 | 11 |
| 13 | 2.3 | 1017465: Developer perform recovery procedure dry-runs (Part 1) |  | 1d | 2020-04-23 | 2020-04-23 | 11 | 83d | 0d | Katie | 8h | EA 15.2 | 11 |
| 14 | 2.4 | 1020233: Perform Dry Run to test: Problem 332002: "IETM Procedure update from DTA-4 Finding: Action to Restor |  | 1d | 2020-04-23 | 2020-04-23 | 11 | 88d |  | Max | 8h | EA 15.2 | 11 |
| 15 | 2.5 | 1017456: UX Dry Run Support for HA Splunk - Recovery Procedures only (Part 1) |  | 1d | 2020-04-23 | 2020-04-23 | 11 | 88d |  | Jacob W | 8h | EA 15.2 | 11 |
| 16 | 2.6 | 1014336: Write Troubleshooting Procedure 1 - Recover from windows universal forwarders going down |  | 5d | 2020-04-23 | 2020-04-29 | 11 | 84d |  | Khai | 40h | EA 15.2 | 11 |
| 17 | 2.7 | 1017526: Write Troubleshooting procedure 10 - Recover from All Nodes <-> License Master lost comm |  | 2d | 2020-04-27 | 2020-04-28 | 12 | 83d | 0d | Joel | 16h | EA 15.2 | 12 |
| 18 | 2.8 | 1019490: Write Troubleshooting procedure 12 - Troubleshoot/Recover KV Store (Investigation) |  | 2d | 2020-04-24 | 2020-04-27 | 13 | 83d | 0d | Katie | 16h | EA 15.2 | 13 |
| 19 | 2.9 | 1014349: Write Troubleshooting procedure 12 - Troubleshoot/Recover KV Store | manual | 3d | 2020-04-28 | 2020-04-30 | 18 |  |  | Katie | 24h | EA 15.2 |  |
| 20 | 2.10 | 1020329: Write Troubleshooting procedure 4- Recover from DB Connect going down (Part 1 - Investigation) |  | 2d | 2020-04-29 | 2020-04-30 | 17 | 83d |  | Joel | 16h | EA 15.2 | 17 |
| 21 | 2.11 | End EA 15.2 | milestone, manual | 0d | 2020-05-06 | 2020-05-06 |  |  |  |  |  |  |  |
| 22 | 3 | **EAD 15.3** |  | 9d | 2020-05-07 | 2020-05-20 |  | 0d |  |  | 216h |  |  |
| 23 | 3.1 | Start EAD 15.3 | milestone, manual | 0d | 2020-05-07 | 2020-05-07 |  |  |  |  |  |  |  |
| 24 | 3.2 | 1017463: Developer perform recovery procedure dry-runs (Part 2) |  | 1d | 2020-05-07 | 2020-05-07 | 23 | 73d | 0d | Katie | 8h | EA 15.3 |  |
| 25 | 3.3 | 1017492: Splunk HA recovery procedures - Create and review STCD for interim demo |  | 2d | 2020-05-07 | 2020-05-08 | 23 | 77d |  | Art | 16h | EA 15.3 |  |
| 26 | 3.4 | 1017451: Sprint 15.3 Support review of Splunk HA recovery procedures (leader) |  | 3d | 2020-05-07 | 2020-05-11 | 23 | 73d | 0d | Ken | 24h | EA 15.3 |  |
| 27 | 3.5 | 1017512: Sprint 15.3 UX support review of Splunk HA recovery procedures |  | 1d | 2020-05-07 | 2020-05-07 | 23 | 77d | 0d | Jacob W | 8h | EA 15.3 |  |
| 28 | 3.6 | 1017458: UX Dry Run Support for HA Splunk - Recovery Procedures only (Part 2) |  | 1d | 2020-05-08 | 2020-05-08 | 27 | 77d |  | Jacob W | 8h | EA 15.3 |  |
| 29 | 3.7 | 1014347: Write Troubleshooting procedure 10 - Recover from All Nodes <-> License Master lost comm |  | 3d | 2020-05-12 | 2020-05-14 | 26 | 73d |  | Ken | 24h | EA 15.3 |  |
| 30 | 3.8 | 1014348: Write Troubleshooting procedure 11- Recover from UF/HF Forwarders <-> Deployment Server lost comm |  | 3d | 2020-05-08 | 2020-05-12 | 24 | 73d | 0d | Katie | 24h | EA 15.3 |  |
| 31 | 3.9 | 1019307: Write Troubleshooting procedure 16 - Troubleshooting when search head member cannot send to captain |  | 3d | 2020-05-07 | 2020-05-11 | 23 | 73d | 0d | Joel | 24h | EA 15.3 |  |
| 32 | 3.10 | 1014337: Write Troubleshooting procedure 2 - Recover from solaris universal forwarders going down |  | 5d | 2020-05-07 | 2020-05-13 | 23 | 74d |  | Khai | 40h | EA 15.3 |  |
| 33 | 3.11 | 1014341: Write Troubleshooting procedure 4- Recover from DB Connect going down (Part 2 - Complete procedure) |  | 3d | 2020-05-12 | 2020-05-14 | 31 | 73d |  | Joel | 24h | EA 15.3 |  |
| 34 | 3.12 | 1019717: Write Troubleshooting procedure 7- Recover from Search Head Cluster <-> Cluster Master lost comm (I |  | 2d | 2020-05-13 | 2020-05-14 | 30 | 73d |  | Katie | 16h | EA 15.3 |  |
| 35 | 3.13 | End EA 15.3 | milestone, manual | 0d | 2020-05-20 | 2020-05-20 |  |  |  |  |  |  |  |

| ID | WBS | Task | Type | Duration | Start | Finish | Predecessors | Total slack | Free slack | Resources | Work | Text1 |
| --- | --- | --- | --- | --- | --- | --- | --- | --- | --- | --- | --- | --- |
| 36 | 4 | **EAD 15.4** |  | 9d | 2020-05-21 | 2020-06-03 |  | 0d |  |  | 256h |  |
| 37 | 4.1 | Start EAD 15.4 | milestone, manual | 0d | 2020-05-21 | 2020-05-21 |  |  |  |  |  |  |
| 38 | 4.2 | 1018078: ILS support - Review of Splunk HA recovery procedures |  | 1d | 2020-05-21 | 2020-05-21 | 37 | 68d |  | Paul B | 8h | EA 15.4 |
| 39 | 4.3 | 1005820: Implement - PWI 387434 |  | 8d | 2020-05-21 | 2020-06-01 | 37 | 61d |  | Greg M | 64h | EA 15.4 |
| 40 | 4.4 | 1017496: Implement - Problem 1010039 |  | 2d | 2020-05-21 | 2020-05-22 | 37 | 64d | 0d | Jacob W | 16h | EA 15.4 |
| 41 | 4.5 | 1017497: Implement - Problem 1010043 |  | 2d | 2020-05-25 | 2020-05-26 | 40 | 64d | 0d | Jacob W | 16h | EA 15.4 |
| 42 | 4.6 | 1017491: Perform dry-run of STCD for interim demo |  | 1d | 2020-05-21 | 2020-05-21 | 37 | 68d |  | Art | 8h | EA 15.4 |
| 43 | 4.7 | 1018319: Provide Deployment Notes and Operator Impact Inputs - interim |  | 1d | 2020-05-21 | 2020-05-21 | 37 | 68d |  | Ricardo | 8h | EA 15.4 |
| 44 | 4.8 | 1017452: Sprint 15.4 Support review of Splunk HA recovery procedures (leader) |  | 3d | 2020-05-21 | 2020-05-25 | 37 | 66d |  | Ken | 24h | EA 15.4 |
| 45 | 4.9 | 1017513: Sprint 15.4 UX support review of Splunk HA recovery procedures |  | 1d | 2020-05-27 | 2020-05-27 | 41 | 64d |  | Jacob W | 8h | EA 15.4 |
| 46 | 4.10 | 1014340: Write Troubleshooting procedure 3 - Recover from Decoder going down |  | 5d | 2020-05-21 | 2020-05-27 | 37 | 64d |  | Khai | 40h | EA 15.4 |
| 47 | 4.11 | 1019308: Write Troubleshooting procedure 8 - Recover from Search Head Cluster <-> Search Head Cluster Deploy |  | 3d | 2020-05-21 | 2020-05-25 | 37 | 66d |  | Joel | 24h | EA 15.4 |
| 48 | 4.12 | 1014346: Write Troubleshooting procedure 9 - Recover from Cluster Master <-> Indexer Cluster lost comm |  | 5d | 2020-05-21 | 2020-05-27 | 37 | 64d |  | Katie | 40h | EA 15.4 |
| 49 | 4.13 | End EAD 15.4 | milestone, manual | 0d | 2020-06-03 | 2020-06-03 |  |  |  |  |  |  |
| 50 | 5 | **EAD 15.5** |  | 9d | 2020-06-04 | 2020-06-17 |  | 0d |  |  | 16h |  |
| 51 | 5.1 | Start EAD 15.5 | milestone, manual | 0d | 2020-06-04 | 2020-06-04 |  |  |  |  |  |  |
| 52 | 5.2 | 1017484: Interim Demo for Feature - Feature 1008506 |  | 1d | 2020-06-04 | 2020-06-04 | 51 | 58d |  | Art | 8h | EA 15.5 |
| 53 | 5.3 | 1017494: Recovery procedures for Splunk HA - SME support for interim demo |  | 1d | 2020-06-04 | 2020-06-04 | 51 | 58d |  | Ken | 8h | EA 15.5 |
| 54 | 5.4 | Stop EAD 15.5 | milestone, manual | 0d | 2020-06-17 | 2020-06-17 |  |  |  |  |  |  |
| 55 | 6 | **PI 16** |  | 49d | 2020-06-18 | 2020-08-26 |  | 0d |  |  | 584h |  |
| 56 | 6.1 | Start PI 16 | milestone, manual | 0d | 2020-06-18 | 2020-06-18 |  |  |  |  |  |  |
| 57 | 6.2 | 1008512: MFR 1 – Dev Team Performs Cybersecurity Assessment |  | 1d | 2020-06-18 | 2020-06-18 | 56 | 47d | 32d | TBD | 8h | PI 16 |
| 58 | 6.3 | 1021848: Investigate Severity Change to Major for Netcool password changes |  | 3d | 2020-06-18 | 2020-06-22 | 56 | 17d | 0d | Dustin | 24h | PI 16 |
| 59 | 6.4 | 1017471: Developer perform troubleshooting procedure dry-runs (Part 1) |  | 2d | 2020-06-18 | 2020-06-19 | 56 | 43d | 0d | TBD | 16h | PI 16 |
| 60 | 6.5 | 1017472: Developer perform troubleshooting procedure dry-runs (Part 2) |  | 2d | 2020-06-22 | 2020-06-23 | 59 | 43d | 0d | TBD | 16h | PI 16 |
| 61 | 6.6 | 1017474: Developer perform troubleshooting procedure dry-runs (Part 3) |  | 2d | 2020-06-24 | 2020-06-25 | 60 | 43d |  | TBD | 16h | PI 16 |
| 62 | 6.7 | 1017475: Write Troubleshooting procedure 13 - Troubleshooting procedure for Search Factor not met |  | 5d | 2020-06-23 | 2020-06-29 | 58 | 17d | 2d | TBD2 | 40h | PI 16 |
| 63 | 6.8 | 1017476: Write Troubleshooting procedure 14 - Troubleshooting procedure for Replication Factor not met |  | 5d | 2020-06-18 | 2020-06-24 | 56 | 15d | 0d | TBD3 | 40h | PI 16 |
| 64 | 6.9 | 1017477: Write Troubleshooting procedure 15 - Troubleshooting procedure to fix dbconnect rpc issue with error |  | 5d | 2020-06-25 | 2020-07-01 | 56, 63 | 15d | 0d | TBD3 | 40h | PI 16 |
| 65 | 6.10 | 1017480: Write Troubleshooting procedure 17 - Data rebalancing for indexers new or offline for an extended pe |  | 5d | 2020-06-18 | 2020-06-24 | 56 | 15d | 0d | TBD4 | 40h | PI 16 |
| 66 | 6.11 | 1014342: Write Troubleshooting procedure 5 - Recover from Forwarder <-> Indexer lost comm |  | 5d | 2020-06-25 | 2020-07-01 | 56, 65 | 15d | 0d | TBD4 | 40h | PI 16 |
| 67 | 6.12 | 1014343: Write Troubleshooting procedure 6 - Recover from Indexer <-> Search Head lost comm |  | 5d | 2020-06-18 | 2020-06-24 | 56 | 20d | 5d | TBD5 | 40h | PI 16 |
| 68 | 6.13 | 1014344: Write Troubleshooting procedure 7- Recover from Search Head Cluster <-> Cluster Master lost comm |  | 3d | 2020-06-18 | 2020-06-22 | 56 | 22d | 7d | Katie | 24h | PI 16 |
| 69 | 6.14 | 1017482: Developer perform troubleshooting procedure dry-runs (Part 4) |  | 3d | 2020-07-02 | 2020-07-06 | 68, 67, 66, 65, 64, 63, 62 | 15d | 0d | TBD | 24h | PI 16 |
| 70 | 6.15 | 1008510: Provide Deployment Notes and Operator Impact Inputs - final |  | 1d | 2020-07-07 | 2020-07-07 | 69 | 15d | 0d | TBD | 8h | PI 16 |
| 71 | 6.16 | 1008514: UX Research and Design Support (Change back to UX Team) |  | 3d | 2020-07-08 | 2020-07-10 | 70 | 15d | 0d | TBD | 24h | PI 16 |
| 72 | 6.17 | 1008513: Develop IETMs and Perform Development Testing |  | 3d | 2020-07-13 | 2020-07-15 | 71 | 15d | 0d | TBD | 24h | PI 16 |
| 73 | 6.18 | 1017341: UX Support for HA Splunk - Nutanix Procedures (Part 2 of 3) |  | 5d | 2020-07-16 | 2020-07-22 | 72 | 15d | 0d | Jacob W | 40h | PI 16 |
| 74 | 6.19 | 1019489: Insure redlines of AMP are incorporated into final release. |  | 1d | 2020-07-23 | 2020-07-23 | 73 | 15d | 0d | Ricardo | 8h | PI 16 |
| 75 | 6.20 | 1008515: ILS Incorporation of IETM updates and integration support (Change back to Falcons) |  | 1d | 2020-07-24 | 2020-07-24 | 74 | 15d | 0d | TBD | 8h | PI 16 |
| 76 | 6.21 | 1017342: UX Support for HA Splunk - Nutanix Procedures (Part 3 of 3) |  | 5d | 2020-07-27 | 2020-07-31 | 75 | 15d | 0d | Jacob W | 40h | PI 16 |
| 77 | 6.22 | 1008520: Initiate CM PDO Processing for all CI's |  | 1d | 2020-08-03 | 2020-08-03 | 76 | 15d | 0d | TBD | 8h | EA 16.5 |
| 78 | 6.23 | 1008509: Create STCD and review with stakeholders |  | 3d | 2020-07-07 | 2020-07-09 | 69 | 29d | 0d | TBD2 | 24h | PI 16 |
| 79 | 6.24 | 1008518: Review the Site Functional Test Plan within STCD and get customer stakeholder approval |  | 2d | 2020-07-10 | 2020-07-13 | 78 | 29d | 0d | TBD2 | 16h | PI 16 |
| 80 | 6.25 | 1008517: Execute STCD Feature Integration and testing including STCD updates identified |  | 1d | 2020-07-14 | 2020-07-14 | 79 | 29d | 14d | TBD2 | 8h | PI 16 |
| 81 | 6.26 | 1008519: Prep and Perform Feature Demo – Customer Demo Event |  | 1d | 2020-08-04 | 2020-08-04 | 77, 57, 80 | 15d |  | TBD | 8h | PI 16 |
| 82 | 6.27 | End PI 16 | milestone, manual | 0d | 2020-08-26 | 2020-08-26 |  |  |  |  |  |  |
