# 11008506 from rtc a

Schedule from MS Project, 2020-04-09 to 2020-07-08.
General Dynamics Mission Systems

## Calendars

- Standard: Mon-Fri 08:00-12:00, 13:00-17:00; Sat-Sun off.

## Resources

| Resource |
| --- |
| Art |
| Dustin |
| Greg M |
| Jacob W |
| Joel |
| Katie |
| Ken |
| Khai |
| Max |
| Paul B |
| Ricardo |
| TBD |
| TBD2 |
| TBD3 |
| TBD4 |
| TBD5 |

## Schedule

| ID | Task | Duration | Start | Finish | Predecessors | Total slack | Free slack | Constraint | Resources | Work | Text1 | Text2_Pred |
| --- | --- | --- | --- | --- | --- | --- | --- | --- | --- | --- | --- | --- |
| 1 | 1019150: Create template for Splunk Troubleshooting procedures | 1d | 2020-04-09 | 2020-04-09 |  | 0d |  |  | Katie | 8h | EA 15.1 |  |
| 2 | 1015751: Resolve Problem 332002: "IETM Procedure update from DTA-4 Finding: Action to Restore Service for PRV | 1d | 2020-04-09 | 2020-04-09 |  | 51d | 0d |  | Max | 8h | EA 15.1 |  |
| 3 | 1017340: UX Support for HA Splunk - Recovery Procedures only (Part 1 of 3) | 1d | 2020-04-09 | 2020-04-09 |  | 8d | 0d |  | Jacob W | 8h | EA 15.1 |  |
| 4 | 1017478: Write Troubleshooting procedure 16 - Troubleshooting when search head member cannot send to captain | 2d | 2020-04-10 | 2020-04-13 | 1 | 0d |  |  | Joel | 16h | EA 15.1 |  |
| 5 | 1014345: Write Troubleshooting procedure 8 - Recover from Search Head Cluster <-> Search Head Cluster Deploy | 2d | 2020-04-14 | 2020-04-15 | 4 | 0d |  |  | Joel | 16h | EA 15.1 |  |
| 6 | 1017449: Write recovery Procedure 6- Decoder recovery procedure for lost heartbeat alarm | 3d | 2020-04-10 | 2020-04-14 | 1 | 1d |  |  | Katie | 24h | EA 15.1 |  |
| 7 | 1017450: Create and support review of Splunk HA recovery procedures | 2d | 2020-04-16 | 2020-04-17 | 6, 5 | 0d |  |  | Joel | 16h | EA 15.2 | 11 |
| 8 | 1017465: Developer perform recovery procedure dry-runs (Part 1) | 1d | 2020-04-20 | 2020-04-20 | 6, 7 | 0d |  |  | Katie | 8h | EA 15.2 | 11 |
| 9 | 1020233: Perform Dry Run to test: Problem 332002: "IETM Procedure update from DTA-4 Finding: Action to Restor | 1d | 2020-04-10 | 2020-04-10 | 2 | 51d |  |  | Max | 8h | EA 15.2 | 11 |
| 10 | 1017456: UX Dry Run Support for HA Splunk - Recovery Procedures only (Part 1) | 1d | 2020-04-10 | 2020-04-10 | 3 | 8d |  |  | Jacob W | 8h | EA 15.2 | 11 |
| 11 | 1014336: Write Troubleshooting Procedure 1 - Recover from windows universal forwarders going down | 5d | 2020-04-10 | 2020-04-16 | 1 | 3d | 0d |  | Khai | 40h | EA 15.2 | 11 |
| 12 | 1017526: Write Troubleshooting procedure 10 - Recover from All Nodes <-> License Master lost comm | 2d | 2020-04-20 | 2020-04-21 | 7, 1 | 4d | 0d |  | Joel | 16h | EA 15.2 | 12 |
| 13 | 1019490: Write Troubleshooting procedure 12 - Troubleshoot/Recover KV Store (Investigation) | 2d | 2020-04-21 | 2020-04-22 | 8, 1 | 0d |  |  | Katie | 16h | EA 15.2 | 13 |
| 14 | 1014349: Write Troubleshooting procedure 12 - Troubleshoot/Recover KV Store | 3d | 2020-04-23 | 2020-04-27 | 13, 1 | 0d |  |  | Katie | 24h | EA 15.2 |  |
| 15 | 1020329: Write Troubleshooting procedure 4- Recover from DB Connect going down (Part 1 - Investigation) | 2d | 2020-04-22 | 2020-04-23 | 12, 1 | 4d | 0d |  | Joel | 16h | EA 15.2 | 17 |
| 16 | 1017463: Developer perform recovery procedure dry-runs (Part 2) | 1d | 2020-04-28 | 2020-04-28 | 13, 14 | 0d |  |  | Katie | 8h | EA 15.3 |  |
| 17 | 1017492: Splunk HA recovery procedures - Create and review STCD for interim demo | 2d | 2020-04-23 | 2020-04-24 | 13 | 40d | 0d |  | Art | 16h | EA 15.3 |  |
| 18 | 1017451: Sprint 15.3 Support review of Splunk HA recovery procedures (leader) | 3d | 2020-04-23 | 2020-04-27 | 13 | 28d | 0d |  | Ken | 24h | EA 15.3 |  |
| 19 | 1017512: Sprint 15.3 UX support review of Splunk HA recovery procedures | 1d | 2020-04-23 | 2020-04-23 | 10, 13 | 7d | 0d |  | Jacob W | 8h | EA 15.3 |  |
| 20 | 1017458: UX Dry Run Support for HA Splunk - Recovery Procedures only (Part 2) | 1d | 2020-04-24 | 2020-04-24 | 19 | 7d | 0d |  | Jacob W | 8h | EA 15.3 |  |
| 21 | 1014347: Write Troubleshooting procedure 10 - Recover from All Nodes <-> License Master lost comm | 3d | 2020-04-28 | 2020-04-30 | 18, 1 | 28d | 1d |  | Ken | 24h | EA 15.3 |  |
| 22 | 1014348: Write Troubleshooting procedure 11- Recover from UF/HF Forwarders <-> Deployment Server lost comm | 3d | 2020-04-29 | 2020-05-01 | 16, 1 | 0d |  |  | Katie | 24h | EA 15.3 |  |
| 23 | 1019307: Write Troubleshooting procedure 16 - Troubleshooting when search head member cannot send to captain | 3d | 2020-04-24 | 2020-04-28 | 1, 15 | 4d | 0d |  | Joel | 24h | EA 15.3 |  |
| 24 | 1014337: Write Troubleshooting procedure 2 - Recover from solaris universal forwarders going down | 5d | 2020-04-17 | 2020-04-23 | 1, 11 | 3d | 0d |  | Khai | 40h | EA 15.3 |  |
| 25 | 1014341: Write Troubleshooting procedure 4- Recover from DB Connect going down (Part 2 - Complete procedure) | 3d | 2020-04-29 | 2020-05-01 | 23, 1 | 4d | 0d |  | Joel | 24h | EA 15.3 |  |
| 26 | 1019717: Write Troubleshooting procedure 7- Recover from Search Head Cluster <-> Cluster Master lost comm (I | 2d | 2020-05-04 | 2020-05-05 | 22, 1 | 0d |  |  | Katie | 16h | EA 15.3 |  |
| 27 | 1018078: ILS support - Review of Splunk HA recovery procedures | 1d | 2020-04-23 | 2020-04-23 | 13 | 42d |  |  | Paul B | 8h | EA 15.4 |  |
| 28 | 1017496: Implement - Problem 1010039 | 2d | 2020-04-27 | 2020-04-28 | 20 | 7d | 0d |  | Jacob W | 16h | EA 15.4 |  |
| 29 | 1017497: Implement - Problem 1010043 | 2d | 2020-04-29 | 2020-04-30 | 28 | 7d | 0d |  | Jacob W | 16h | EA 15.4 |  |
| 30 | 1017491: Perform dry-run of STCD for interim demo | 1d | 2020-04-27 | 2020-04-27 | 17 | 52d |  |  | Art | 8h | EA 15.4 |  |
| 31 | 1017452: Sprint 15.4 Support review of Splunk HA recovery procedures (leader) | 3d | 2020-05-01 | 2020-05-05 | 29 | 7d | 6d |  | Ken | 24h | EA 15.4 |  |
| 32 | 1017513: Sprint 15.4 UX support review of Splunk HA recovery procedures | 1d | 2020-05-01 | 2020-05-01 | 29 | 48d |  |  | Jacob W | 8h | EA 15.4 |  |
| 33 | 1014340: Write Troubleshooting procedure 3 - Recover from Decoder going down | 5d | 2020-04-24 | 2020-04-30 | 1, 24 | 8d |  |  | Khai | 40h | EA 15.4 |  |
| 34 | 1019308: Write Troubleshooting procedure 8 - Recover from Search Head Cluster <-> Search Head Cluster Deploy | 3d | 2020-05-04 | 2020-05-06 | 1, 25 | 4d | 0d |  | Joel | 24h | EA 15.4 |  |
| 35 | 1014346: Write Troubleshooting procedure 9 - Recover from Cluster Master <-> Indexer Cluster lost comm | 5d | 2020-05-06 | 2020-05-12 | 1, 26 | 0d |  |  | Katie | 40h | EA 15.4 |  |
| 36 | 1018319: Provide Deployment Notes and Operator Impact Inputs - interim | 1d | 2020-05-13 | 2020-05-13 | 24, 33, 34, 35 | 0d |  |  | Ricardo | 8h | EA 15.4 |  |
| 37 | 1017484: Interim Demo for Feature - Feature 1008506 | 1d | 2020-05-14 | 2020-05-14 | 36 | 39d |  |  | Art | 8h | EA 15.5 |  |
| 38 | 1017494: Recovery procedures for Splunk HA - SME support for interim demo | 1d | 2020-05-14 | 2020-05-14 | 36 | 0d |  |  | Ken | 8h | EA 15.5 |  |
| 39 | 1021848: Investigate Severity Change to Major for Netcool password changes | 3d | 2020-05-21 | 2020-05-25 |  | 0d |  | as late as possible | Dustin | 24h | PI 16 |  |
| 40 | 1017471: Developer perform troubleshooting procedure dry-runs (Part 1) | 2d | 2020-05-07 | 2020-05-08 | 11, 12, 13, 14, 15, 23, 25, 34 | 34d | 0d |  | Joel | 16h | PI 16 |  |
| 41 | 1017472: Developer perform troubleshooting procedure dry-runs (Part 2) | 2d | 2020-05-11 | 2020-05-12 | 21, 22, 23, 24, 25, 26, 40 | 34d | 20d |  | Joel | 16h | PI 16 |  |
| 42 | 1017474: Developer perform troubleshooting procedure dry-runs (Part 3) | 2d | 2020-05-13 | 2020-05-14 | 33, 34, 35 | 32d | 18d |  | Joel | 16h | PI 16 |  |
| 43 | 1017475: Write Troubleshooting procedure 13 - Troubleshooting procedure for Search Factor not met | 5d | 2020-05-26 | 2020-06-01 | 39, 34, 35 | 0d |  |  | Katie | 40h | PI 16 |  |
| 44 | 1017476: Write Troubleshooting procedure 14 - Troubleshooting procedure for Replication Factor not met | 5d | 2020-05-15 | 2020-05-21 | 33, 31, 38 | 0d |  |  | Ken | 40h | PI 16 |  |
| 45 | 1017477: Write Troubleshooting procedure 15 - Troubleshooting procedure to fix dbconnect rpc issue with error | 5d | 2020-05-22 | 2020-05-28 | 44 | 0d |  |  | Ken | 40h | PI 16 |  |
| 46 | 1017480: Write Troubleshooting procedure 17 - Data rebalancing for indexers new or offline for an extended pe | 5d | 2020-05-14 | 2020-05-20 | 31, 36 | 6d | 0d |  | Ricardo | 40h | PI 16 |  |
| 47 | 1014342: Write Troubleshooting procedure 5 - Recover from Forwarder <-> Indexer lost comm | 5d | 2020-05-21 | 2020-05-27 | 46 | 6d |  |  | Ricardo | 40h | PI 16 |  |
| 48 | 1014343: Write Troubleshooting procedure 6 - Recover from Indexer <-> Search Head lost comm | 5d | 2020-05-29 | 2020-06-04 | 45 | 0d |  |  | Ken | 40h | PI 16 |  |
| 49 | 1014344: Write Troubleshooting procedure 7- Recover from Search Head Cluster <-> Cluster Master lost comm | 3d | 2020-06-02 | 2020-06-04 | 35, 43 | 0d |  |  | Katie | 24h | PI 16 |  |
| 50 | 1017482: Developer perform troubleshooting procedure dry-runs (Part 4) | 3d | 2020-06-05 | 2020-06-09 | 49, 48, 47, 46, 45, 44, 43 | 0d |  |  | Joel | 24h | PI 16 |  |
| 51 | 1008510: Provide Deployment Notes and Operator Impact Inputs - final | 1d | 2020-06-10 | 2020-06-10 | 50 | 0d |  |  | Joel | 8h | PI 16 |  |
| 52 | 1008514: UX Research and Design Support (Change back to UX Team) | 3d | 2020-06-11 | 2020-06-15 | 51 | 0d |  |  | Joel | 24h | PI 16 |  |
| 53 | 1008513: Develop IETMs and Perform Development Testing | 3d | 2020-06-16 | 2020-06-18 | 52 | 0d |  |  | Joel | 24h | PI 16 |  |
| 54 | 1017341: UX Support for HA Splunk - Nutanix Procedures (Part 2 of 3) | 5d | 2020-06-19 | 2020-06-25 | 53 | 0d |  |  | Jacob W | 40h | PI 16 |  |
| 55 | 1019489: Insure redlines of AMP are incorporated into final release. | 1d | 2020-06-26 | 2020-06-26 | 54 | 0d |  |  | Ricardo | 8h | PI 16 |  |
| 56 | 1008515: ILS Incorporation of IETM updates and integration support (Change back to Falcons) | 1d | 2020-06-29 | 2020-06-29 | 55 | 0d |  |  | Joel | 8h | PI 16 |  |
| 57 | 1017342: UX Support for HA Splunk - Nutanix Procedures (Part 3 of 3) | 5d | 2020-06-30 | 2020-07-06 | 56 | 0d |  |  | Jacob W | 40h | PI 16 |  |
| 58 | 1008520: Initiate CM PDO Processing for all CI's | 1d | 2020-07-07 | 2020-07-07 | 57 | 0d |  |  | Joel | 8h | EA 16.5 |  |
| 59 | 1005820: Implement - PWI 387434 | 8d | 2020-06-26 | 2020-07-07 |  | 0d |  | as late as possible | Greg M | 64h | EA 15.4 |  |
| 60 | 1008512: MFR 1 – Dev Team Performs Cybersecurity Assessment | 1d | 2020-07-07 | 2020-07-07 |  | 0d |  | as late as possible | TBD | 8h | PI 16 |  |
| 61 | 1008509: Create STCD and review with stakeholders | 3d | 2020-06-10 | 2020-06-12 | 50, 40, 41, 42 | 14d | 0d |  | Katie | 24h | PI 16 |  |
| 62 | 1008518: Review the Site Functional Test Plan within STCD and get customer stakeholder approval | 2d | 2020-06-15 | 2020-06-16 | 61 | 14d | 0d |  | Katie | 16h | PI 16 |  |
| 63 | 1008517: Execute STCD Feature Integration and testing including STCD updates identified | 1d | 2020-06-17 | 2020-06-17 | 62 | 14d |  |  | Katie | 8h | PI 16 |  |
| 64 | 1008519: Prep and Perform Feature Demo – Customer Demo Event | 1d | 2020-07-08 | 2020-07-08 | 58, 60, 63, 59 | 0d |  |  | Joel | 8h | PI 16 |  |
