# 11008506 from rtc

Schedule from MS Project, 2020-04-09 to 2020-06-23.
General Dynamics Mission Systems

## Calendars

- Standard: Mon-Fri 08:00-12:00, 13:00-17:00; Sat-Sun off.

## Resources

| Resource |
| --- |
| Art |
| Dustin |
| Greg M |
| Jacob W |
| Joel |
| Katie |
| Ken |
| Khai |
| Max |
| Paul B |
| Ricardo |
| TBD |

## Schedule

| ID | WBS | Task | Type | Duration | Start | Finish | Predecessors | Resources | Work | Text1 |
| --- | --- | --- | --- | --- | --- | --- | --- | --- | --- | --- |
| 1 | 1 | **EA 15.1** |  | 10d | 2020-04-09 | 2020-04-22 |  |  | 80h |  |
| 2 | 1.1 | 1019150: Create template for Splunk Troubleshooting procedures | manual | 1d | 2020-04-13 | 2020-04-13 | 7 | Katie | 8h | EA 15.1 |
| 3 | 1.2 | 1015751: Resolve Problem 332002: "IETM Procedure update from DTA-4 Finding: Action to Restore Service for PRV | manual | 1d | 2020-04-09 | 2020-04-09 |  | Max | 8h | EA 15.1 |
| 4 | 1.3 | 1017340: UX Support for HA Splunk - Recovery Procedures only (Part 1 of 3) | manual | 1d | 2020-04-09 | 2020-04-09 |  | Jacob W | 8h | EA 15.1 |
| 5 | 1.4 | 1017478: Write Troubleshooting procedure 16 - Troubleshooting when search head member cannot send to captain | manual | 2d | 2020-04-09 | 2020-04-09 |  | Joel | 16h | EA 15.1 |
| 6 | 1.5 | 1014345: Write Troubleshooting procedure 8 - Recover from Search Head Cluster <-> Search Head Cluster Deploy | manual | 2d | 2020-04-10 | 2020-04-13 | 5 | Joel | 16h | EA 15.1 |
| 7 | 1.6 | 1017449: Write recovery Procedure 6- Decoder recovery procedure for lost heartbeat alarm | manual | 3d | 2020-04-09 | 2020-04-10 |  | Katie | 24h | EA 15.1 |
| 8 | 2 | **EA 15.2** |  | 10d | 2020-04-23 | 2020-05-06 |  |  | 152h |  |
| 9 | 2.1 | 1017450: Create and support review of Splunk HA recovery procedures | manual | 2d | 2020-04-23 | 2020-04-23 |  | Joel | 16h | EA 15.2 |
| 10 | 2.2 | 1017465: Developer perform recovery procedure dry-runs (Part 1) | manual | 1d | 2020-04-23 | 2020-04-23 |  | Katie | 8h | EA 15.2 |
| 11 | 2.3 | 1020233: Perform Dry Run to test: Problem 332002: "IETM Procedure update from DTA-4 Finding: Action to Restor | manual | 1d | 2020-04-23 | 2020-04-23 |  | Max | 8h | EA 15.2 |
| 12 | 2.4 | 1017456: UX Dry Run Support for HA Splunk - Recovery Procedures only (Part 1) | manual | 1d | 2020-04-23 | 2020-04-23 |  | Jacob W | 8h | EA 15.2 |
| 13 | 2.5 | 1014336: Write Troubleshooting Procedure 1 - Recover from windows universal forwarders going down | manual | 5d | 2020-04-23 | 2020-04-28 |  | Khai | 40h | EA 15.2 |
| 14 | 2.6 | 1017526: Write Troubleshooting procedure 10 - Recover from All Nodes <-> License Master lost comm | manual | 2d | 2020-04-23 | 2020-04-23 |  | Joel | 16h | EA 15.2 |
| 15 | 2.7 | 1014349: Write Troubleshooting procedure 12 - Troubleshoot/Recover KV Store | manual | 3d | 2020-04-23 | 2020-04-24 |  | Katie | 24h | EA 15.2 |
| 16 | 2.8 | 1019490: Write Troubleshooting procedure 12 - Troubleshoot/Recover KV Store (Investigation) | manual | 2d | 2020-04-23 | 2020-04-23 |  | Katie | 16h | EA 15.2 |
| 17 | 2.9 | 1020329: Write Troubleshooting procedure 4- Recover from DB Connect going down (Part 1 - Investigation) | manual | 2d | 2020-04-23 | 2020-04-23 |  | Joel | 16h | EA 15.2 |
| 18 | 3 | 1017463: Developer perform recovery procedure dry-runs (Part 2) | manual | 1d | 2020-05-07 | 2020-05-07 |  | Katie | 8h | EA 15.3 |
| 19 | 4 | 1017492: Splunk HA recovery procedures - Create and review STCD for interim demo | manual | 2d | 2020-05-07 | 2020-05-07 |  | Art | 16h | EA 15.3 |
| 20 | 5 | 1017451: Sprint 15.3 Support review of Splunk HA recovery procedures (leader) | manual | 3d | 2020-05-07 | 2020-05-08 |  | Ken | 24h | EA 15.3 |
| 21 | 6 | 1017512: Sprint 15.3 UX support review of Splunk HA recovery procedures | manual | 1d | 2020-05-07 | 2020-05-07 |  | Jacob W | 8h | EA 15.3 |
| 22 | 7 | 1017458: UX Dry Run Support for HA Splunk - Recovery Procedures only (Part 2) | manual | 1d | 2020-05-07 | 2020-05-07 |  | Jacob W | 8h | EA 15.3 |
| 23 | 8 | 1014347: Write Troubleshooting procedure 10 - Recover from All Nodes <-> License Master lost comm | manual | 3d | 2020-05-07 | 2020-05-08 |  | Ken | 24h | EA 15.3 |
| 24 | 9 | 1014348: Write Troubleshooting procedure 11- Recover from UF/HF Forwarders <-> Deployment Server lost comm | manual | 3d | 2020-05-07 | 2020-05-08 |  | Katie | 24h | EA 15.3 |
| 25 | 10 | 1019307: Write Troubleshooting procedure 16 - Troubleshooting when search head member cannot send to captain | manual | 3d | 2020-05-07 | 2020-05-08 |  | Joel | 24h | EA 15.3 |
| 26 | 11 | 1014337: Write Troubleshooting procedure 2 - Recover from solaris universal forwarders going down | manual | 5d | 2020-05-07 | 2020-05-12 |  | Khai | 40h | EA 15.3 |
| 27 | 12 | 1014341: Write Troubleshooting procedure 4- Recover from DB Connect going down (Part 2 - Complete procedure) | manual | 3d | 2020-05-07 | 2020-05-08 |  | Joel | 24h | EA 15.3 |
| 28 | 13 | 1019717: Write Troubleshooting procedure 7- Recover from Search Head Cluster <-> Cluster Master lost comm (I | manual | 2d | 2020-05-07 | 2020-05-07 |  | Katie | 16h | EA 15.3 |
| 29 | 14 | 1018078: ILS support - Review of Splunk HA recovery procedures | manual | 1d | 2020-05-21 | 2020-05-21 |  | Paul B | 8h | EA 15.4 |
| 30 | 15 | 1005820: Implement - PWI 387434 | manual | 8d | 2020-05-21 | 2020-05-29 |  | Greg M | 64h | EA 15.4 |
| 31 | 16 | 1017496: Implement - Problem 1010039 | manual | 2d | 2020-05-21 | 2020-05-21 |  | Jacob W | 16h | EA 15.4 |
| 32 | 17 | 1017497: Implement - Problem 1010043 | manual | 2d | 2020-05-21 | 2020-05-21 |  | Jacob W | 16h | EA 15.4 |
| 33 | 18 | 1017491: Perform dry-run of STCD for interim demo | manual | 1d | 2020-05-21 | 2020-05-21 |  | Art | 8h | EA 15.4 |
| 34 | 19 | 1018319: Provide Deployment Notes and Operator Impact Inputs - interim | manual | 1d | 2020-05-21 | 2020-05-21 |  | Ricardo | 8h | EA 15.4 |
| 35 | 20 | 1017452: Sprint 15.4 Support review of Splunk HA recovery procedures (leader) | manual | 3d | 2020-05-21 | 2020-05-22 |  | Ken | 24h | EA 15.4 |
| 36 | 21 | 1017513: Sprint 15.4 UX support review of Splunk HA recovery procedures | manual | 1d | 2020-05-21 | 2020-05-21 |  | Jacob W | 8h | EA 15.4 |
| 37 | 22 | 1014340: Write Troubleshooting procedure 3 - Recover from Decoder going down | manual | 5d | 2020-05-21 | 2020-05-26 |  | Khai | 40h | EA 15.4 |
| 38 | 23 | 1019308: Write Troubleshooting procedure 8 - Recover from Search Head Cluster <-> Search Head Cluster Deploy | manual | 3d | 2020-05-21 | 2020-05-22 |  | Joel | 24h | EA 15.4 |
| 39 | 24 | 1014346: Write Troubleshooting procedure 9 - Recover from Cluster Master <-> Indexer Cluster lost comm | manual | 5d | 2020-05-21 | 2020-05-26 |  | Katie | 40h | EA 15.4 |
| 40 | 25 | 1017484: Interim Demo for Feature - Feature 1008506 | manual | 1d | 2020-06-04 | 2020-06-04 |  | Art | 8h | EA 15.5 |
| 41 | 26 | 1017494: Recovery procedures for Splunk HA - SME support for interim demo | manual | 1d | 2020-06-04 | 2020-06-04 |  | Ken | 8h | EA 15.5 |
| 42 | 27 | 1008520: Initiate CM PDO Processing for all CI's | manual | 1d | 2020-06-04 | 2020-06-04 |  | TBD | 8h | EA 16.5 |
| 43 | 28 | 1008509: Create STCD and review with stakeholders | manual | 3d | 2020-06-18 | 2020-06-19 |  | TBD | 24h | PI 16 |
| 44 | 29 | 1008513: Develop IETMs and Perform Development Testing | manual | 3d | 2020-06-18 | 2020-06-19 |  | TBD | 24h | PI 16 |
| 45 | 30 | 1017471: Developer perform troubleshooting procedure dry-runs (Part 1) | manual | 2d | 2020-06-18 | 2020-06-18 |  | TBD | 16h | PI 16 |
| 46 | 31 | 1017472: Developer perform troubleshooting procedure dry-runs (Part 2) | manual | 2d | 2020-06-18 | 2020-06-18 |  | TBD | 16h | PI 16 |
| 47 | 32 | 1017474: Developer perform troubleshooting procedure dry-runs (Part 3) | manual | 2d | 2020-06-18 | 2020-06-18 |  | TBD | 16h | PI 16 |
| 48 | 33 | 1017482: Developer perform troubleshooting procedure dry-runs (Part 4) | manual | 3d | 2020-06-18 | 2020-06-19 |  | TBD | 24h | PI 16 |
| 49 | 34 | 1008517: Execute STCD Feature Integration and testing including STCD updates identified | manual | 1d | 2020-06-18 | 2020-06-18 |  | TBD | 8h | PI 16 |
| 50 | 35 | 1008515: ILS Incorporation of IETM updates and integration support (Change back to Falcons) | manual | 1d | 2020-06-18 | 2020-06-18 |  | TBD | 8h | PI 16 |
| 51 | 36 | 1019489: Insure redlines of AMP are incorporated into final release. | manual | 1d | 2020-06-18 | 2020-06-18 |  | Ricardo | 8h | PI 16 |
| 52 | 37 | 1021848: Investigate Severity Change to Major for Netcool password changes | manual | 3d | 2020-06-18 | 2020-06-19 |  | Dustin | 24h | PI 16 |
| 53 | 38 | 1008512: MFR 1 – Dev Team Performs Cybersecurity Assessment | manual | 1d | 2020-06-18 | 2020-06-18 |  | TBD | 8h | PI 16 |
| 54 | 39 | 1008519: Prep and Perform Feature Demo – Customer Demo Event | manual | 1d | 2020-06-18 | 2020-06-18 |  | TBD | 8h | PI 16 |
| 55 | 40 | 1008510: Provide Deployment Notes and Operator Impact Inputs - final | manual | 1d | 2020-06-18 | 2020-06-18 |  | TBD | 8h | PI 16 |
| 56 | 41 | 1008518: Review the Site Functional Test Plan within STCD and get customer stakeholder approval | manual | 2d | 2020-06-18 | 2020-06-18 |  | TBD | 16h | PI 16 |
| 57 | 42 | 1008514: UX Research and Design Support (Change back to UX Team) | manual | 3d | 2020-06-18 | 2020-06-19 |  | TBD | 24h | PI 16 |
| 58 | 43 | 1017341: UX Support for HA Splunk - Nutanix Procedures (Part 2 of 3) | manual | 5d | 2020-06-18 | 2020-06-23 |  | Jacob W | 40h | PI 16 |
| 59 | 44 | 1017342: UX Support for HA Splunk - Nutanix Procedures (Part 3 of 3) | manual | 5d | 2020-06-18 | 2020-06-23 |  | Jacob W | 40h | PI 16 |
| 60 | 45 | 1017475: Write Troubleshooting procedure 13 - Troubleshooting procedure for Search Factor not met | manual | 5d | 2020-06-18 | 2020-06-23 |  | TBD | 40h | PI 16 |
| 61 | 46 | 1017476: Write Troubleshooting procedure 14 - Troubleshooting procedure for Replication Factor not met | manual | 5d | 2020-06-18 | 2020-06-23 |  | TBD | 40h | PI 16 |
| 62 | 47 | 1017477: Write Troubleshooting procedure 15 - Troubleshooting procedure to fix dbconnect rpc issue with error | manual | 5d | 2020-06-18 | 2020-06-23 |  | TBD | 40h | PI 16 |
| 63 | 48 | 1017480: Write Troubleshooting procedure 17 - Data rebalancing for indexers new or offline for an extended pe | manual | 5d | 2020-06-18 | 2020-06-23 |  | TBD | 40h | PI 16 |
| 64 | 49 | 1014342: Write Troubleshooting procedure 5 - Recover from Forwarder <-> Indexer lost comm | manual | 5d | 2020-06-18 | 2020-06-23 |  | TBD | 40h | PI 16 |
| 65 | 50 | 1014343: Write Troubleshooting procedure 6 - Recover from Indexer <-> Search Head lost comm | manual | 5d | 2020-06-18 | 2020-06-23 |  | TBD | 40h | PI 16 |
| 66 | 51 | 1014344: Write Troubleshooting procedure 7- Recover from Search Head Cluster <-> Cluster Master lost comm | manual | 3d | 2020-06-18 | 2020-06-19 |  | Katie | 24h | PI 16 |
