Schedule from MS Project, 2020-04-09 to 2020-08-26.
General Dynamics Mission Systems

## Calendars

- Standard: Mon-Fri 08:00-12:00, 13:00-17:00; Sat-Sun off.

## Schedule

| ID | WBS | Task | Type | Duration | Start | Finish | Predecessors | Total slack | Free slack | Constraint | PlannedFor |
| --- | --- | --- | --- | --- | --- | --- | --- | --- | --- | --- | --- |
| 1 | 1 | **PI 15** |  | 50d | 2020-04-09 | 2020-06-17 |  | 0d |  |  |  |
| 2 | 1.1 | EA 15.1 | manual | 2w | 2020-04-09 | 2020-04-22 |  |  |  |  |  |
| 3 | 1.2 | EA 15.2 | manual | 2w | 2020-04-23 | 2020-05-06 | 2 |  |  |  |  |
| 4 | 1.3 | EA 15.3 | manual | 2w | 2020-05-07 | 2020-05-20 | 3 |  |  |  |  |
| 5 | 1.4 | EA 15.4 | manual | 2w | 2020-05-21 | 2020-06-03 | 4 |  |  |  |  |
| 6 | 1.5 | EA 15.5 | manual | 2w | 2020-06-04 | 2020-06-17 | 5 |  |  |  |  |
| 7 | 2 | PI 16 | manual | 10w | 2020-06-18 | 2020-08-26 | 1 |  |  |  |  |
| 8 | 3 | **Write Recovery Procedures** |  | 12d | 2020-04-09 | 2020-04-24 |  | 78d | 0d |  |  |
| 9 | 3.1 | 1017449: Write recovery Procedure 6- Decoder recovery procedure for lost heartbeat alarm |  | 3d | 2020-04-09 | 2020-04-13 |  | 97d |  |  | EA 15.1 |
| 10 | 3.2 | 1017492: Splunk HA recovery procedures - Create and review STCD for interim demo |  | 2d | 2020-04-23 | 2020-04-24 | 9 | 78d |  | start no earlier than 2020-04-23 | EA 15.3 |
| 11 | 4 | **Review Recovery Procedures** |  | 8d | 2020-04-27 | 2020-05-06 | 8 | 78d | 0d |  |  |
| 12 | 4.1 | 1017340: UX Support for HA Splunk - Recovery Procedures only (Part 1 of 3) |  | 1d | 2020-04-27 | 2020-04-27 |  | 85d |  |  | EA 15.1 |
| 13 | 4.2 | 1017450: Create and support review of Splunk HA recovery procedures |  | 2d | 2020-04-27 | 2020-04-28 |  | 78d | 0d |  | EA 15.2 |
| 14 | 4.3 | 1017451: Sprint 15.3 Support review of Splunk HA recovery procedures (leader) |  | 3d | 2020-04-29 | 2020-05-01 | 13 | 78d | 0d |  | EA 15.3 |
| 15 | 4.4 | 1017512: Sprint 15.3 UX support review of Splunk HA recovery procedures |  | 1d | 2020-04-27 | 2020-04-27 |  | 85d |  |  | EA 15.3 |
| 16 | 4.5 | 1018078: ILS support - Review of Splunk HA recovery procedures |  | 1d | 2020-04-27 | 2020-04-27 |  | 85d |  |  | EA 15.4 |
| 17 | 4.6 | 1017452: Sprint 15.4 Support review of Splunk HA recovery procedures (leader) |  | 3d | 2020-05-04 | 2020-05-06 | 14 | 78d |  |  | EA 15.4 |
| 18 | 4.7 | 1017513: Sprint 15.4 UX support review of Splunk HA recovery procedures |  | 1d | 2020-04-27 | 2020-04-27 |  | 85d |  |  | EA 15.4 |
| 19 | 5 | **Dry Run Recovery Procedures** |  | 2d | 2020-05-07 | 2020-05-08 | 11 | 78d |  |  |  |
| 20 | 5.1 | 1017465: Developer perform recovery procedure dry-runs (Part 1) |  | 1d | 2020-05-07 | 2020-05-07 |  | 78d | 0d |  | EA 15.2 |
| 21 | 5.2 | 1017456: UX Dry Run Support for HA Splunk - Recovery Procedures only (Part 1) |  | 1d | 2020-05-07 | 2020-05-07 |  | 79d |  |  | EA 15.2 |
| 22 | 5.3 | 1017463: Developer perform recovery procedure dry-runs (Part 2) |  | 1d | 2020-05-08 | 2020-05-08 | 20 | 78d |  |  | EA 15.3 |
| 23 | 5.4 | 1017458: UX Dry Run Support for HA Splunk - Recovery Procedures only (Part 2) |  | 1d | 2020-05-07 | 2020-05-07 |  | 79d |  |  | EA 15.3 |
| 24 | 5.5 | 1017494: Recovery procedures for Splunk HA - SME support for interim demo |  | 1d | 2020-05-07 | 2020-05-07 |  | 79d |  |  | EA 15.5 |

| ID | WBS | Task | Duration | Start | Finish | Total slack | PlannedFor |
| --- | --- | --- | --- | --- | --- | --- | --- |
| 25 | 6 | **Write PI 15 Troubleshooting Procedures** | 5d | 2020-04-09 | 2020-04-15 | 95d |  |
| 26 | 6.1 | 1019150: Create template for Splunk Troubleshooting procedures | 1d | 2020-04-09 | 2020-04-09 | 99d | EA 15.1 |
| 27 | 6.2 | 1017478: Write Troubleshooting procedure 16 - Troubleshooting when search head member can | 2d | 2020-04-09 | 2020-04-10 | 98d | EA 15.1 |
| 28 | 6.3 | 1014345: Write Troubleshooting procedure 8 - Recover from Search Head Cluster <-> Search | 2d | 2020-04-09 | 2020-04-10 | 98d | EA 15.1 |
| 29 | 6.4 | 1014336: Write Troubleshooting Procedure 1 - Recover from windows universal forwarders go | 5d | 2020-04-09 | 2020-04-15 | 95d | EA 15.2 |
| 30 | 6.5 | 1017526: Write Troubleshooting procedure 10 - Recover from All Nodes <-> License Master | 2d | 2020-04-09 | 2020-04-10 | 98d | EA 15.2 |
| 31 | 6.6 | 1014349: Write Troubleshooting procedure 12 - Troubleshoot/Recover KV Store | 3d | 2020-04-09 | 2020-04-13 | 97d | EA 15.2 |
| 32 | 6.7 | 1019490: Write Troubleshooting procedure 12 - Troubleshoot/Recover KV Store (Investigatio | 2d | 2020-04-09 | 2020-04-10 | 98d | EA 15.2 |
| 33 | 6.8 | 1020329: Write Troubleshooting procedure 4- Recover from DB Connect going down (Part 1 - | 2d | 2020-04-09 | 2020-04-10 | 98d | EA 15.2 |
| 34 | 6.9 | 1014347: Write Troubleshooting procedure 10 - Recover from All Nodes <-> License Master | 3d | 2020-04-09 | 2020-04-13 | 97d | EA 15.3 |
| 35 | 6.10 | 1014348: Write Troubleshooting procedure 11- Recover from UF/HF Forwarders <-> Deploymen | 5d | 2020-04-09 | 2020-04-15 | 95d | EA 15.3 |
| 36 | 6.11 | 1019307: Write Troubleshooting procedure 16 - Troubleshooting when search head member can | 3d | 2020-04-09 | 2020-04-13 | 97d | EA 15.3 |
| 37 | 6.12 | 1014337: Write Troubleshooting procedure 2 - Recover from solaris universal forwarders go | 5d | 2020-04-09 | 2020-04-15 | 95d | EA 15.3 |
| 38 | 6.13 | 1014341: Write Troubleshooting procedure 4- Recover from DB Connect going down (Part 2 - | 3d | 2020-04-09 | 2020-04-13 | 97d | EA 15.3 |
| 39 | 6.14 | 1014340: Write Troubleshooting procedure 3 - Recover from Decoder going down | 5d | 2020-04-09 | 2020-04-15 | 95d | EA 15.4 |
| 40 | 6.15 | 1019717: Write Troubleshooting procedure 7- Recover from Search Head Cluster <-> Cluster | 2d | 2020-04-09 | 2020-04-10 | 98d | EA 15.4 |
| 41 | 6.16 | 1019308: Write Troubleshooting procedure 8 - Recover from Search Head Cluster <-> Search | 3d | 2020-04-09 | 2020-04-13 | 97d | EA 15.4 |
| 42 | 6.17 | 1014346: Write Troubleshooting procedure 9 - Recover from Cluster Master <-> Indexer Clu | 5d | 2020-04-09 | 2020-04-15 | 95d | EA 15.4 |
| 43 | 7 | **Write PI 16 Troubleshooting Procedures** | 5d | 2020-04-09 | 2020-04-15 | 95d |  |
| 44 | 7.1 | 1008511: Perform Iterative Implementation, Integration, development Testing including upd | 3d | 2020-04-09 | 2020-04-13 | 97d | PI 16 |
| 45 | 7.2 | 1008514: UX Research and Design Support (Change back to UX Team) | 3d | 2020-04-09 | 2020-04-13 | 97d | PI 16 |
| 46 | 7.3 | 1017341: UX Support for HA Splunk - Nutanix Procedures (Part 2 of 3) | 5d | 2020-04-09 | 2020-04-15 | 95d | PI 16 |
| 47 | 7.4 | 1008508: Document Initial capability specification and detailed design to start Implement | 3d | 2020-04-09 | 2020-04-13 | 97d | PI 16 |
| 48 | 7.5 | 1017475: Write Troubleshooting procedure 13 - Troubleshooting procedure for Search Factor | 5d | 2020-04-09 | 2020-04-15 | 95d | PI 16 |
| 49 | 7.6 | 1017476: Write Troubleshooting procedure 14 - Troubleshooting procedure for Replication F | 5d | 2020-04-09 | 2020-04-15 | 95d | PI 16 |
| 50 | 7.7 | 1017477: Write Troubleshooting procedure 15 - Troubleshooting procedure to fix dbconnect | 5d | 2020-04-09 | 2020-04-15 | 95d | PI 16 |
| 51 | 7.8 | 1017480: Write Troubleshooting procedure 17 - Data rebalancing for indexers new or offlin | 5d | 2020-04-09 | 2020-04-15 | 95d | PI 16 |
| 52 | 7.9 | 1014342: Write Troubleshooting procedure 5 - Recover from Forwarder <-> Indexer lost com | 5d | 2020-04-09 | 2020-04-15 | 95d | PI 16 |
| 53 | 7.10 | 1014343: Write Troubleshooting procedure 6 - Recover from Indexer <-> Search Head lost c | 5d | 2020-04-09 | 2020-04-15 | 95d | PI 16 |
| 54 | 7.11 | 1014344: Write Troubleshooting procedure 7- Recover from Search Head Cluster <-> Cluster | 3d | 2020-04-09 | 2020-04-13 | 97d | PI 16 |
| 55 | 7.12 | 1008509: Create STCD and review with stakeholders | 3d | 2020-04-09 | 2020-04-13 | 97d | PI 16 |

| ID | WBS | Task | Duration | Start | Finish | Total slack | PlannedFor |
| --- | --- | --- | --- | --- | --- | --- | --- |
| 56 | 8 | **Review Troubleshooting Procedures** | 5d | 2020-04-09 | 2020-04-15 | 95d |  |
| 57 | 8.1 | 1017342: UX Support for HA Splunk - Nutanix Procedures (Part 3 of 3) | 5d | 2020-04-09 | 2020-04-15 | 95d | PI 16 |
| 58 | 8.2 | 1008518: Review the Site Functional Test Plan within STCD and get customer stakeholder ap | 2d | 2020-04-09 | 2020-04-10 | 98d | PI 16 |
| 59 | 9 | **Dry Run PI 15 Troubleshooting Procedures** | 2d | 2020-04-09 | 2020-04-10 | 98d |  |
| 60 | 9.1 | 1017471: Developer perform troubleshooting procedure dry-runs (Part 1) | 2d | 2020-04-09 | 2020-04-10 | 98d | PI 16 |
| 61 | 9.2 | 1017472: Developer perform troubleshooting procedure dry-runs (Part 2) | 2d | 2020-04-09 | 2020-04-10 | 98d | PI 16 |
| 62 | 9.3 | 1017474: Developer perform troubleshooting procedure dry-runs (Part 3) | 2d | 2020-04-09 | 2020-04-10 | 98d | PI 16 |
| 63 | 10 | **Dry Run PI 16 Troubleshooting Procedures** | 3d | 2020-04-09 | 2020-04-13 | 97d |  |
| 64 | 10.1 | 1017482: Developer perform troubleshooting procedure dry-runs (Part 4) | 3d | 2020-04-09 | 2020-04-13 | 97d | PI 16 |
| 65 | 11 | **Perform Interim Demo for PI 15 Troubleshooting Procedures** | 1d | 2020-04-09 | 2020-04-09 | 99d |  |
| 66 | 11.1 | 1017491: Perform dry-run of STCD for interim demo | 1d | 2020-04-09 | 2020-04-09 | 99d | EA 15.4 |
| 67 | 11.2 | 1017484: Interim Demo for Feature - Feature 1008506 | 1d | 2020-04-09 | 2020-04-09 | 99d | EA 15.5 |
| 68 | 12 | **Work PWIs** | 8d | 2020-04-09 | 2020-04-20 | 92d |  |
| 69 | 12.1 | 1015751: Resolve Problem 332002: "IETM Procedure update from DTA-4 Finding: Action to Res | 1d | 2020-04-09 | 2020-04-09 | 99d | EA 15.1 |
| 70 | 12.2 | 1005820: Implement - PWI 387434 | 8d | 2020-04-09 | 2020-04-20 | 92d | EA 15.3 |
| 71 | 12.3 | 1017496: Implement - Problem 1010039 | 2d | 2020-04-09 | 2020-04-10 | 98d | EA 15.4 |
| 72 | 12.4 | 1017497: Implement - Problem 1010043 | 2d | 2020-04-09 | 2020-04-10 | 98d | EA 15.4 |
| 73 | 12.5 | 1020233: Perform Dry Run to test: Problem 332002: "IETM Procedure update from DTA-4 Findi | 1d | 2020-04-09 | 2020-04-09 | 99d | EA 15.2 |
| 74 | 13 | **Feature Closeout** | 3d | 2020-04-09 | 2020-04-13 | 97d |  |
| 75 | 13.1 | 1018319: Provide Deployment Notes and Operator Impact Inputs - interim | 1d | 2020-04-09 | 2020-04-09 | 99d | EA 15.4 |
| 76 | 13.2 | 1008512: MFR 1 – Dev Team Performs Cybersecurity Assessment | 1d | 2020-04-09 | 2020-04-09 | 99d | PI 16 |
| 77 | 13.3 | 1008515: ILS Incorporation of IETM updates and integration support (Change back to Falcon | 1d | 2020-04-09 | 2020-04-09 | 99d | PI 16 |
| 78 | 13.4 | 1019489: Insure redlines of AMP are incorporated into final release. | 1d | 2020-04-09 | 2020-04-09 | 99d | PI 16 |
| 79 | 13.5 | 1008510: Provide Deployment Notes and Operator Impact Inputs - final | 1d | 2020-04-09 | 2020-04-09 | 99d | PI 16 |
| 80 | 13.6 | 1008516: Provide Development inputs to common documents | 3d | 2020-04-09 | 2020-04-13 | 97d | PI 16 |
| 81 | 13.7 | 1008513: Develop IETMs and Perform Development Testing | 3d | 2020-04-09 | 2020-04-13 | 97d | PI 16 |
| 82 | 13.8 | 1008520: Initiate CM PDO Processing for all CI's | 1d | 2020-04-09 | 2020-04-09 | 99d | EA 16.5 |
| 83 | 13.9 | 1008517: Execute STCD Feature Integration and testing including STCD updates identified | 3d | 2020-04-09 | 2020-04-13 | 97d | PI 16 |
| 84 | 13.10 | 1008519: Prep and Perform Feature Demo – Customer Demo Event | 1d | 2020-04-09 | 2020-04-09 | 99d | PI 16 |
